# BS Beauty Academy

Schedule from ProjectLibre, 2025-03-18 to 2025-12-05, 1 hours a day.

## Calendars

- Padrão: Mon-Fri 08:00-09:00; Sat-Sun off.

## Resources

| Resource | Rate |
| --- | --- |
| Não atribuído |  |
| Sumário |  |
| Recursos Humanos |  |
| Gestão |  |
| Alyson | 41.7 |
| Desenvolvimento |  |
| Bruno | 25 |
| Eliel | 25 |
| Henrique | 25 |
| Henrriky | 66.7 |
| Auditoria |  |
| Giovanna | 16.7 |
| Recursos Materiais |  |
| Computador |  |
| Internet |  |
| AWS |  |
| SonarQube |  |

## Schedule

| ID | WBS | Task | Duration | Start | Finish | Predecessors | Complete | Constraint | Resources |
| --- | --- | --- | --- | --- | --- | --- | --- | --- | --- |
| 1 | 1 | **Sistema para Gerenciamento de Salão de Beleza** | 188d | 2025-03-18 | 2025-12-05 |  | 35% |  |  |
| 2 | 1.1 | Início do Projeto | 0d | 2025-03-18 | 2025-03-18 |  |  | must start on 2025-03-18 |  |
| 4 | 1.2 | **Planejamento do Projeto (SPOPIE1)** | 81d | 2025-03-18 | 2025-07-08 | 2SS | 97% |  |  |
| 6 | 1.2.1 | **Etapa 1: Definição do Tema** | 16d | 2025-03-18 | 2025-04-08 |  | 100% | start no earlier than 2025-03-18 |  |
| 7 | 1.2.1.1 | Definição da equipe | 2d | 2025-03-18 | 2025-03-19 |  | 100% |  | Alyson [70%] |
| 8 | 1.2.1.2 | Busca da entidade parceira | 2d | 2025-03-20 | 2025-03-21 | 7 | 100% |  | Henrriky [95%] |
| 9 | 1.2.1.3 | Entrevista e alinhamento com entidade parceira | 6d | 2025-03-24 | 2025-03-31 | 8 | 100% |  | Alyson [50%]; Henrriky [50%] |
| 10 | 1.2.1.4 | Elaboração e apresentação do tema | 6d | 2025-04-01 | 2025-04-08 | 9 | 100% |  | Alyson [10%]; Bruno [10%]; Eliel [10%]; Henrique [10%]; Henrriky [10%]; Giovanna [30%] |
| 11 | 1.2.1.5 | Aprovação do Tema | 0d | 2025-04-08 | 2025-04-08 | 10, 12 |  | start no earlier than 2025-04-08 |  |
| 12 | 1.2.1.6 | Preenchimento da 1ª tabela de autoavaliação | 15d | 2025-03-18 | 2025-04-07 |  | 100% |  | Alyson [5%]; Bruno [5%]; Eliel [5%]; Henrique [5%]; Henrriky [5%]; Giovanna [5%] |
| 14 | 1.2.2 | **Etapa 2: Desenho da Aplicação** | 19d | 2025-04-09 | 2025-05-05 | 11SS | 100% |  |  |
| 15 | 1.2.2.1 | **Elicitação de Requisitos** | 19d | 2025-04-09 | 2025-05-05 |  | 100% |  |  |
| 16 | 1.2.2.1.1 | Levantamento das regras de negócio | 7d | 2025-04-09 | 2025-04-17 |  | 100% |  | Alyson [50%] |
| 17 | 1.2.2.1.2 | Criação de histórias de usuários | 7d | 2025-04-09 | 2025-04-17 |  | 100% |  | Alyson |
| 18 | 1.2.2.1.3 | Análise de requisitos | 8d | 2025-04-18 | 2025-04-29 | 16, 17 | 100% |  | Alyson [40%]; Bruno [30%]; Eliel [30%] |
| 19 | 1.2.2.1.4 | Formalização dos requisitos | 2d | 2025-04-30 | 2025-05-01 | 18 | 100% |  | Alyson [30%]; Bruno [50%] |
| 20 | 1.2.2.1.5 | Validação dos requisitos | 2d | 2025-05-02 | 2025-05-05 | 19 | 100% |  | Henrriky |
| 21 | 1.2.2.2 | **Confecção de Diagramas** | 14d | 2025-04-09 | 2025-04-29 |  | 100% |  |  |
| 22 | 1.2.2.2.1 | Estudo de diagramas | 7d | 2025-04-09 | 2025-04-17 |  | 100% |  | Henrriky [50%]; Henrique [50%] |
| 23 | 1.2.2.2.2 | Criação do diagrama de componentes | 7d | 2025-04-18 | 2025-04-28 | 22 | 100% |  | Henrique [50%]; Henrriky [50%] |
| 24 | 1.2.2.2.3 | Criação do diagrama de implantação | 7d | 2025-04-18 | 2025-04-28 | 22 | 100% |  | Henrique [50%]; Henrriky [50%] |
| 25 | 1.2.2.2.4 | Elaboração e preparação para apresentação dos diagramas | 6d | 2025-04-21 | 2025-04-28 | 23SS, 24SS | 100% | as late as possible | Henrique [50%]; Henrriky [50%] |
| 26 | 1.2.2.2.5 | Entrega do Desenho da Aplicação | 0d | 2025-04-29 | 2025-04-29 | 25, 27 |  | must finish on 2025-04-29 |  |
| 27 | 1.2.2.3 | Preenchimento da 2ª tabela de autoavaliação | 14d | 2025-04-09 | 2025-04-28 |  | 100% | as late as possible | Alyson [5%]; Bruno [5%]; Eliel [5%]; Henrique [5%]; Henrriky [5%]; Giovanna [5%] |

| ID | WBS | Task | Duration | Start | Finish | Predecessors | Complete | Constraint | Resources |
| --- | --- | --- | --- | --- | --- | --- | --- | --- | --- |
| 29 | 1.2.3 | **Etapa 3: Gestão do Projeto** | 30d | 2025-04-09 | 2025-05-20 | 11SS | 100% |  |  |
| 30 | 1.2.3.1 | Definição das metodologias de gestão e desenvolvimento | 2d | 2025-04-09 | 2025-04-10 |  | 100% |  | Alyson |
| 31 | 1.2.3.2 | Escolha e configuração da ferramenta de gestão | 4d | 2025-04-11 | 2025-04-16 | 30 | 100% |  | Alyson |
| 32 | 1.2.3.3 | **Planejamento do Scrum** | 24d | 2025-04-17 | 2025-05-20 | 31 | 100% |  |  |
| 33 | 1.2.3.3.1 | Definição dos papéis do Scrum | 2d | 2025-04-17 | 2025-04-18 |  | 100% |  | Alyson |
| 34 | 1.2.3.3.2 | Priorização das histórias de usuário | 2d | 2025-04-21 | 2025-04-22 | 17, 33 | 100% |  | Alyson |
| 35 | 1.2.3.3.3 | Definição dos critérios de pronto | 4d | 2025-04-23 | 2025-04-28 | 34 | 100% |  | Alyson |
| 36 | 1.2.3.3.4 | Definição do product backlog inicial | 5d | 2025-04-29 | 2025-05-05 | 35 | 100% |  | Alyson |
| 37 | 1.2.3.3.5 | Estimativa de esforço | 2d | 2025-05-06 | 2025-05-07 | 36 | 100% |  | Alyson |
| 38 | 1.2.3.3.6 | Planejamento das sprints | 4d | 2025-05-08 | 2025-05-13 | 37 | 100% |  | Alyson |
| 39 | 1.2.3.3.7 | Quebra das histórias em tarefas técnicas | 5d | 2025-05-14 | 2025-05-20 | 38 | 100% |  | Alyson |
| 42 | 1.2.4 | **Etapa 4: Estudo de Plataformas e Tecnologias** | 29d | 2025-04-09 | 2025-05-20 | 11SS, 15SS | 100% |  |  |
| 43 | 1.2.4.1 | Levantamento de requisitos técnicos | 4d | 2025-04-09 | 2025-04-14 |  | 100% |  | Henrriky |
| 44 | 1.2.4.2 | Definição da arquitetura do sistema | 3d | 2025-04-15 | 2025-04-17 | 43 | 100% |  | Henrique |
| 45 | 1.2.4.3 | Análise de tecnologias backend | 7d | 2025-04-18 | 2025-04-28 | 44 | 100% |  | Bruno [50%]; Eliel [50%] |
| 46 | 1.2.4.4 | Análise de tecnologias frontend | 7d | 2025-04-18 | 2025-04-28 | 44 | 100% |  | Bruno [50%]; Eliel [50%] |
| 47 | 1.2.4.5 | Análise de banco de dados | 7d | 2025-04-18 | 2025-04-28 | 44 | 100% |  | Eliel [50%]; Henrique [50%] |
| 48 | 1.2.4.6 | Definição de tecnologias e ferramentas de desenvolvimento | 4d | 2025-04-29 | 2025-05-02 | 45, 46, 47 | 100% |  | Bruno [33.33%]; Eliel [33.33%]; Henrique [33.33%] |
| 49 | 1.2.4.7 | Pesquisa sobre APIs e serviços de terceiros | 10d | 2025-04-15 | 2025-04-28 | 43 | 100% |  | Henrique [50%]; Henrriky [50%] |
| 50 | 1.2.4.8 | Estudo de plataformas de hospedagem e deploy | 10d | 2025-04-15 | 2025-04-28 | 43 | 100% |  | Henrique [50%]; Henrriky [50%] |
| 51 | 1.2.4.9 | Validação das plataformas e tecnologias | 3d | 2025-05-05 | 2025-05-07 | 48, 49, 50 | 100% |  | Henrriky |
| 52 | 1.2.4.10 | Preparação para a prova de conceito | 7d | 2025-05-08 | 2025-05-16 | 51 | 100% |  | Henrique [50%]; Henrriky [50%] |
| 53 | 1.2.4.11 | Prova de Conceito | 0d | 2025-05-20 | 2025-05-20 | 26, 52, 54 |  | must finish on 2025-05-20 |  |
| 54 | 1.2.4.12 | Preenchimento da 3ª tabela de autoavaliação | 15d | 2025-04-29 | 2025-05-19 |  | 100% | as late as possible | Alyson [5%]; Bruno [5%]; Eliel [5%]; Henrique [5%]; Henrriky [5%]; Giovanna [5%] |

| ID | WBS | Task | Duration | Start | Finish | Predecessors | Complete | Resources |
| --- | --- | --- | --- | --- | --- | --- | --- | --- |
| 56 | 1.2.5 | **Etapa 5: Desenvolvimento do MVP** | 54d | 2025-04-09 | 2025-06-24 | 11SS, 15SS, 42SS, 97SS | 98% |  |
| 57 | 1.2.5.1 | **Modelagem do Banco de Dados** | 15d | 2025-04-09 | 2025-04-29 |  | 100% |  |
| 58 | 1.2.5.1.1 | Levantamento das entidades principais | 5d | 2025-04-09 | 2025-04-15 |  | 100% | Eliel [50%]; Bruno [50%] |
| 59 | 1.2.5.1.2 | Definição dos relacionamentos entre entidades | 3d | 2025-04-16 | 2025-04-18 | 58 | 100% | Bruno [50%]; Eliel [50%] |
| 60 | 1.2.5.1.3 | Criação do modelo lógico | 3d | 2025-04-21 | 2025-04-23 | 59 | 100% | Eliel [50%]; Bruno [50%] |
| 61 | 1.2.5.1.4 | Transformação para modelo físico | 2d | 2025-04-24 | 2025-04-25 | 60 | 100% | Eliel [50%]; Bruno [50%] |
| 62 | 1.2.5.1.5 | Criação do schema no Prisma ORM | 2d | 2025-04-28 | 2025-04-29 | 61 | 100% | Henrriky |
| 64 | 1.2.5.2 | **Implementação do Back-End** | 22d | 2025-04-30 | 2025-05-29 | 62 | 100% |  |
| 65 | 1.2.5.2.1 | Configuração inicial do projeto back-end | 2d | 2025-04-30 | 2025-05-01 |  | 100% | Henrriky |
| 66 | 1.2.5.2.2 | Implementação de autenticação com Google OAuth API | 10d | 2025-05-02 | 2025-05-15 | 65 | 100% | Henrriky [50%]; Henrique [50%] |
| 67 | 1.2.5.2.3 | **Desenvolvimento de CRUDs** | 16d | 2025-05-02 | 2025-05-23 | 65 | 100% |  |
| 68 | 1.2.5.2.3.1 | Implementação do CRUD de cliente | 4d | 2025-05-02 | 2025-05-07 |  | 100% | Alyson [25%] |
| 69 | 1.2.5.2.3.2 | Implementação do CRUD de funcionária | 4d | 2025-05-02 | 2025-05-07 |  | 100% | Alyson [25%] |
| 70 | 1.2.5.2.3.3 | Implementação do CRUD de turno | 4d | 2025-05-08 | 2025-05-13 | 69 | 100% | Alyson [50%] |
| 71 | 1.2.5.2.3.4 | Implementação do CRUD de serviço | 4d | 2025-05-02 | 2025-05-07 |  | 100% | Eliel |
| 72 | 1.2.5.2.3.5 | Implementação do CRUD de oferta | 4d | 2025-05-14 | 2025-05-19 | 69, 70, 71 | 100% | Alyson [20%] |
| 73 | 1.2.5.2.3.6 | Implementação do CRUD de agendamento | 4d | 2025-05-20 | 2025-05-23 | 68, 72 | 100% | Alyson [30%] |
| 74 | 1.2.5.2.4 | Criação de endpoints da API REST | 4d | 2025-05-26 | 2025-05-29 | 67, 66 | 100% | Alyson [35%]; Eliel [15%]; Henrique [20%]; Henrriky [30%] |
| 76 | 1.2.5.3 | **Implementação do Front-End** | 29d | 2025-04-30 | 2025-06-09 | 64SS | 96% |  |
| 77 | 1.2.5.3.1 | Configuração inicial do projeto front-end | 2d | 2025-04-30 | 2025-05-01 |  | 100% | Henrriky |
| 78 | 1.2.5.3.2 | Criação inicial do design de telas | 10d | 2025-04-30 | 2025-05-13 |  | 100% | Henrriky [50%]; Bruno [50%] |
| 79 | 1.2.5.3.3 | **Desenvolvimento de Telas** | 10d | 2025-05-14 | 2025-05-27 | 77, 78 | 94% |  |
| 80 | 1.2.5.3.3.1 | Implementação da página inicial da aplicação | 10d | 2025-05-14 | 2025-05-27 |  | 50% | Bruno |
| 81 | 1.2.5.3.3.2 | Implementação da interface de login/cadastro | 10d | 2025-05-14 | 2025-05-27 |  | 100% | Henrriky |
| 82 | 1.2.5.3.3.3 | Implementação da tela de visualização de serviços | 10d | 2025-05-14 | 2025-05-27 |  | 100% | Henrriky [50%]; Henrique [50%] |
| 83 | 1.2.5.3.3.4 | Implementação da tela de agendamento | 10d | 2025-05-14 | 2025-05-27 |  | 100% | Henrriky [50%]; Henrique [50%] |
| 84 | 1.2.5.3.3.5 | Implementação da tela de criação de serviços | 10d | 2025-05-14 | 2025-05-27 |  | 100% | Alyson [30%] |
| 85 | 1.2.5.3.3.6 | Implementação da tela de turnos | 10d | 2025-05-14 | 2025-05-27 |  | 100% | Henrique |
| 86 | 1.2.5.3.3.7 | Implementação da tela de dashboard inicial | 10d | 2025-05-14 | 2025-05-27 |  | 100% | Eliel |
| 87 | 1.2.5.3.4 | Integração com a API do backend | 7d | 2025-05-30 | 2025-06-09 | 79, 74 | 100% | Henrriky [35%]; Henrique [25%]; Eliel [25%]; Alyson [15%] |

| ID | WBS | Task | Duration | Start | Finish | Predecessors | Complete | Constraint | Resources |
| --- | --- | --- | --- | --- | --- | --- | --- | --- | --- |
| 89 | 1.2.5.4 | **Deploy** | 10d | 2025-06-10 | 2025-06-23 | 64, 76 | 100% |  |  |
| 90 | 1.2.5.4.1 | Configuração de instâncias EC2 | 3d | 2025-06-10 | 2025-06-12 |  | 100% |  | Henrriky [50%]; Henrique [50%] |
| 91 | 1.2.5.4.2 | Configuração de armazenamento e banco de dados | 3d | 2025-06-13 | 2025-06-17 | 90 | 100% |  | Henrriky [50%]; Henrique [50%] |
| 92 | 1.2.5.4.3 | Configuração e deploy da aplicação | 4d | 2025-06-18 | 2025-06-23 | 91 | 100% |  | Henrriky [50%]; Henrique [50%] |
| 93 | 1.2.5.5 | Apresentação do MVP | 0d | 2025-06-24 | 2025-06-24 | 89 |  | must finish on 2025-06-24 |  |
| 95 | 1.2.6 | **Etapa 6: Documentação do Planejamento** | 64d | 2025-03-18 | 2025-06-13 | 2SS | 95% |  |  |
| 96 | 1.2.6.1 | Produção do projectlibre | 60d | 2025-03-24 | 2025-06-13 |  | 90% |  | Alyson [20%] |
| 97 | 1.2.6.2 | Criação do repositório remoto no GitHub | 2d | 2025-03-18 | 2025-03-19 |  | 100% |  | Henrriky [95%] |
| 98 | 1.2.6.3 | Definição de padronização para arquivos e diretórios da documentação | 2d | 2025-03-20 | 2025-03-21 | 97 | 100% |  | Giovanna [50%]; Alyson [50%] |
| 100 | 1.2.6.4 | **Produção da Documentação** | 56d | 2025-03-24 | 2025-06-09 | 98 | 100% |  |  |
| 101 | 1.2.6.4.1 | Produção do capítulo "Introdução" | 56d | 2025-03-24 | 2025-06-09 | 8SS | 100% |  | Giovanna [10%] |
| 102 | 1.2.6.4.2 | Produção do capítulo "Revisão da Literatura" | 50d | 2025-04-01 | 2025-06-09 | 10SS | 100% |  | Giovanna [10%] |
| 103 | 1.2.6.4.3 | Produção do capítulo "Gestão do Projeto" | 56d | 2025-03-24 | 2025-06-09 | 7SS | 100% |  | Alyson [10%] |
| 104 | 1.2.6.4.4 | **Produção do Capítulo "Desenvolvimento do Projeto"** | 43d | 2025-04-10 | 2025-06-09 | 14SS, 42SS, 56SS | 100% | start no earlier than 2025-04-10 |  |
| 105 | 1.2.6.4.4.1 | Produção do tópico "Escopo do Projeto" | 43d | 2025-04-10 | 2025-06-09 | 15SS | 100% |  | Bruno [10%] |
| 106 | 1.2.6.4.4.2 | Produção do tópico "Histórias de Usuários" | 43d | 2025-04-10 | 2025-06-09 | 15SS | 100% |  | Bruno [10%] |
| 107 | 1.2.6.4.4.3 | Produção do tópico "Arquitetura" | 43d | 2025-04-10 | 2025-06-09 | 21SS | 100% |  | Henrriky [10%] |
| 108 | 1.2.6.4.4.4 | Produção do tópico "Tecnologias" | 43d | 2025-04-10 | 2025-06-09 | 42SS | 100% |  | Henrriky [10%] |
| 109 | 1.2.6.4.4.5 | Produção do tópico "Testes e Manutenibildade" | 43d | 2025-04-10 | 2025-06-09 | 56SS | 100% |  | Henrique [10%] |
| 110 | 1.2.6.4.4.6 | Produção do tópico "Segurança, Privacidade e Legislação" | 43d | 2025-04-10 | 2025-06-09 | 56SS | 100% |  | Eliel [10%] |
| 111 | 1.2.6.4.4.7 | Produção do tópico "Modelo de Banco de Dados" | 43d | 2025-04-10 | 2025-06-09 | 56SS | 100% |  | Eliel [10%] |
| 112 | 1.2.6.4.4.8 | Produção do tópico "Duração / Cronograma" | 43d | 2025-04-10 | 2025-06-09 |  | 100% |  | Alyson |
| 113 | 1.2.6.4.4.9 | Produção do tópico "Viabilidade Financeira" | 43d | 2025-04-10 | 2025-06-09 | 42SS | 100% |  | Alyson [10%] |
| 114 | 1.2.6.4.5 | Produção do tópico "Considerações Finais" | 56d | 2025-03-24 | 2025-06-09 |  | 100% |  | Giovanna [10%] |
| 116 | 1.2.6.5 | Supervisão do documento | 56d | 2025-03-24 | 2025-06-09 | 100SS, 101FF, 102FF, 103FF, 105FF, 106FF, 107FF, 108FF, 109FF, 110FF, 111FF, 112FF, 114FF | 90% |  | Giovanna [15%] |
| 118 | 1.2.6.6 | Entrega da Documentação Final | 0d | 2025-06-10 | 2025-06-10 | 116, 120 |  | must finish on 2025-06-10 |  |
| 120 | 1.2.6.7 | Preenchimento da 4ª tabela de autoavaliação | 15d | 2025-05-20 | 2025-06-09 |  | 70% | as late as possible | Alyson [5%]; Bruno [5%]; Eliel [5%]; Henrique [5%]; Henrriky [5%]; Giovanna [5%] |
| 122 | 1.2.7 | Aprovação na disciplina SPOPIE1 | 0d | 2025-07-08 | 2025-07-08 | 93FS+1.38d, 118 |  |  |  |

| ID | WBS | Task | Duration | Start | Finish | Predecessors | Constraint | Resources |
| --- | --- | --- | --- | --- | --- | --- | --- | --- |
| 124 | 1.3 | **Desenvolvimento do Sistema (SPOPIE2)** | 84d | 2025-08-11 | 2025-12-05 | 122FS+2.88d |  |  |
| 125 | 1.3.1 | **Gestão do Desenvolvimento** | 80d | 2025-08-11 | 2025-11-28 |  |  |  |
| 126 | 1.3.1.1 | Planejamento das sprints | 80d | 2025-08-11 | 2025-11-28 |  |  | Alyson [50%]; Henrriky [50%] |
| 127 | 1.3.1.2 | Reuniões diárias | 80d | 2025-08-11 | 2025-11-28 |  |  | Alyson [16.67%]; Bruno [16.67%]; Eliel [16.67%]; Henrique [16.67%]; Henrriky [16.67%]; Giovanna [16.67%] |
| 129 | 1.3.2 | **Etapa 1: Melhorias no Processo de Agendamento** | 9d | 2025-08-11 | 2025-08-22 | 56 |  |  |
| 130 | 1.3.2.1 | Revisão da modelagem do banco de dados | 2d | 2025-08-11 | 2025-08-12 |  |  | Eliel |
| 131 | 1.3.2.2 | Refatoração do back-end | 4d | 2025-08-13 | 2025-08-18 | 130 |  | Eliel [50%]; Henrique [50%] |
| 132 | 1.3.2.3 | Refatoração do front-end | 4d | 2025-08-13 | 2025-08-18 | 130 |  | Bruno [50%]; Henrriky [50%] |
| 133 | 1.3.2.4 | Correção de bugs existentes | 3d | 2025-08-19 | 2025-08-21 | 131, 132 |  | Eliel [33.33%]; Henrique [33.33%]; Henrriky [33%] |
| 134 | 1.3.2.5 | Implementação das regras de negócio faltantes | 7d | 2025-08-13 | 2025-08-21 | 130 |  | Alyson [25%]; Eliel [25%]; Henrique [25%]; Henrriky [25%] |
| 135 | 1.3.2.6 | MVP Melhorado | 0d | 2025-08-22 | 2025-08-22 | 133, 134, 136, 137, 138 | must finish on 2025-08-22 |  |
| 136 | 1.3.2.7 | Melhorias de UX | 9d | 2025-08-11 | 2025-08-21 |  |  | Bruno |
| 137 | 1.3.2.8 | Validação com a entidade parceira | 2d | 2025-08-20 | 2025-08-21 |  | as late as possible | Alyson [50%]; Henrriky [50%] |
| 138 | 1.3.2.9 | Revisão do trabalho realizado | 2d | 2025-08-20 | 2025-08-21 |  | as late as possible | Alyson [16.67%]; Bruno [16.67%]; Eliel [16.67%]; Henrique [16.67%]; Henrriky [16.67%]; Giovanna [16.67%] |
| 140 | 1.3.3 | **Etapa 2: Implementação do Processo de Aprovação de Novos Serviços** | 9d | 2025-08-25 | 2025-09-05 | 135FS+0.12d |  |  |
| 141 | 1.3.3.1 | Ajustes na tabela de serviços do banco de dados | 2d | 2025-08-25 | 2025-08-26 |  |  | Eliel |
| 142 | 1.3.3.2 | Implementação da lógica de aprovação/reprovação | 4d | 2025-08-27 | 2025-09-01 | 141 |  | Henrriky [50%]; Eliel [50%] |
| 143 | 1.3.3.3 | Integração do front-end com o back-end | 3d | 2025-09-02 | 2025-09-04 | 142, 145 |  | Henrique [50%]; Henrriky [50%] |
| 144 | 1.3.3.4 | Prcoesso de Aprovação de Serviços Implementado | 0d | 2025-09-05 | 2025-09-05 | 143, 147, 148 | must finish on 2025-09-05 |  |
| 145 | 1.3.3.5 | Implementação das telas | 4d | 2025-08-27 | 2025-09-01 | 146 |  | Bruno [50%]; Alyson [50%] |
| 146 | 1.3.3.6 | Design das telas de serviços pendentes | 2d | 2025-08-25 | 2025-08-26 |  |  | Bruno |
| 147 | 1.3.3.7 | Validação com a entidade parceira | 2d | 2025-09-03 | 2025-09-04 |  | as late as possible | Alyson [50%]; Henrriky [50%] |
| 148 | 1.3.3.8 | Revisão do trabalho realizado | 2d | 2025-09-03 | 2025-09-04 |  | as late as possible | Alyson [16.67%]; Bruno [16.67%]; Eliel [16.67%]; Henrique [16.67%]; Henrriky [16.67%]; Giovanna [16.67%] |
| 150 | 1.3.4 | **Etapa 3: Implementação do Processo de Notificações** | 9d | 2025-09-08 | 2025-09-19 | 144FS+0.12d |  |  |
| 151 | 1.3.4.1 | Criação e ajustes na tabela de notificações do banco de dados | 2d | 2025-09-08 | 2025-09-09 |  |  | Henrriky |
| 152 | 1.3.4.2 | Implementação do envio de notificações para novos agendamentos | 4d | 2025-09-10 | 2025-09-15 | 151 |  | Henrique [50%]; Henrriky [50%] |
| 153 | 1.3.4.3 | Implementação do envio de notificações para cancelamentos e alterações | 4d | 2025-09-10 | 2025-09-15 | 151 |  | Alyson |
| 154 | 1.3.4.4 | Integração do front-end com o back-end | 3d | 2025-09-16 | 2025-09-18 | 152, 153, 156 |  | Eliel [50%]; Henrique [50%] |
| 155 | 1.3.4.5 | Processo de Notificações Implementado | 0d | 2025-09-19 | 2025-09-19 | 154, 158, 159 | must finish on 2025-09-19 |  |
| 156 | 1.3.4.6 | Implementação das telas para visualização e histórico | 4d | 2025-09-10 | 2025-09-15 | 157 |  | Bruno [50%]; Eliel [50%] |
| 157 | 1.3.4.7 | Design das telas de notificação | 2d | 2025-09-08 | 2025-09-09 |  |  | Bruno |
| 158 | 1.3.4.8 | Validação com a entidade parceira | 2d | 2025-09-17 | 2025-09-18 |  | as late as possible | Alyson [50%]; Henrriky [50%] |
| 159 | 1.3.4.9 | Revisão do trabalho realizado | 2d | 2025-09-17 | 2025-09-18 |  | as late as possible | Alyson [16.67%]; Bruno [16.67%]; Eliel [16.67%]; Henrique [16.67%]; Henrriky [16.67%]; Giovanna [16.67%] |

| ID | WBS | Task | Duration | Start | Finish | Predecessors | Constraint | Resources |
| --- | --- | --- | --- | --- | --- | --- | --- | --- |
| 161 | 1.3.5 | **Etapa 4: Implementação do Processo de Geração de Relatórios** | 19d | 2025-09-22 | 2025-10-17 | 155FS+0.12d |  |  |
| 162 | 1.3.5.1 | **Relatórios de Produtividade** | 9d | 2025-09-22 | 2025-10-02 |  |  |  |
| 163 | 1.3.5.1.1 | Implementação da lógica de análise do total de atendimentos | 9d | 2025-09-22 | 2025-10-02 |  |  | Alyson |
| 164 | 1.3.5.1.2 | Implementação da lógica de análise do número de clientes atendidos | 9d | 2025-09-22 | 2025-10-02 |  |  | Bruno |
| 165 | 1.3.5.1.3 | Implementação da lógica de análise das horas trabalhadas | 9d | 2025-09-22 | 2025-10-02 |  |  | Eliel |
| 167 | 1.3.5.2 | Relatórios Inicias Implementados | 0d | 2025-10-03 | 2025-10-03 | 162, 169 | must finish on 2025-10-03 |  |
| 169 | 1.3.5.3 | **Relatórios Financeiros** | 9d | 2025-09-22 | 2025-10-02 |  |  |  |
| 170 | 1.3.5.3.1 | Implementação da lógica de análise do rendimento por profissional | 9d | 2025-09-22 | 2025-10-02 |  |  | Henrique |
| 171 | 1.3.5.3.2 | Implementação da lógica de análise do rendimento por serviço/categoria | 9d | 2025-09-22 | 2025-10-02 |  |  | Henrriky |
| 172 | 1.3.5.3.3 | Implementação da lógica de análise do rendimento total | 9d | 2025-09-22 | 2025-10-02 |  |  | Alyson |
| 174 | 1.3.5.4 | **Relatórios de Ocupação** | 9d | 2025-10-06 | 2025-10-16 | 167FS+0.12d |  |  |
| 175 | 1.3.5.4.1 | Implementação da lógica de análise dos horários de pico | 9d | 2025-10-06 | 2025-10-16 |  |  | Bruno |
| 176 | 1.3.5.4.2 | Implementação da lógica de análise dos serviços mais agendados | 9d | 2025-10-06 | 2025-10-16 |  |  | Eliel |
| 177 | 1.3.5.4.3 | Implementação da lógica de análise de profissionais mais requisitadas | 9d | 2025-10-06 | 2025-10-16 |  |  | Henrique |
| 179 | 1.3.5.5 | **Relatórios de Cliente** | 9d | 2025-10-06 | 2025-10-16 | 167FS+0.12d |  |  |
| 180 | 1.3.5.5.1 | Implementação da lógica de análise de idade | 9d | 2025-10-06 | 2025-10-16 |  |  | Henrriky |
| 181 | 1.3.5.5.2 | Implementação da lógica de análise de sexo | 9d | 2025-10-06 | 2025-10-16 |  |  | Alyson |
| 182 | 1.3.5.5.3 | Implementação da lógica de análise de origem | 9d | 2025-10-06 | 2025-10-16 |  |  | Bruno |
| 184 | 1.3.5.6 | Implementação de filtros diversos | 16d | 2025-09-22 | 2025-10-13 |  |  | Eliel [50%]; Henrique [50%] |
| 185 | 1.3.5.7 | Geração de gráficos | 16d | 2025-09-22 | 2025-10-13 |  |  | Alyson [50%]; Henrriky [50%] |
| 186 | 1.3.5.8 | Integração do front-end com o back-end | 3d | 2025-10-14 | 2025-10-16 | 184, 185, 188 |  | Eliel [50%]; Henrique [50%] |
| 187 | 1.3.5.9 | Processo de Geração de Relatórios Implementado | 0d | 2025-10-17 | 2025-10-17 | 174, 179, 186, 190, 191 | must finish on 2025-10-17 |  |
| 188 | 1.3.5.10 | Implementação das telas | 11d | 2025-09-29 | 2025-10-13 | 189 |  | Alyson [20%]; Bruno [20%]; Eliel [20%]; Henrique [20%]; Henrriky [20%] |
| 189 | 1.3.5.11 | Design das telas de relatórios | 5d | 2025-09-22 | 2025-09-26 |  |  | Bruno |
| 190 | 1.3.5.12 | Validação com a entidade parceira | 2d | 2025-10-15 | 2025-10-16 |  | as late as possible | Alyson [50%]; Henrriky [50%] |
| 191 | 1.3.5.13 | Revisão do trabalho realizado | 2d | 2025-10-15 | 2025-10-16 |  | as late as possible | Alyson [16.67%]; Bruno [16.67%]; Eliel [16.67%]; Henrique [16.67%]; Henrriky [16.67%]; Giovanna [16.67%] |

| ID | WBS | Task | Duration | Start | Finish | Predecessors | Constraint | Resources |
| --- | --- | --- | --- | --- | --- | --- | --- | --- |
| 193 | 1.3.6 | **Etapa 5: Implementação do Processo de Avaliação de Serviços** | 9d | 2025-10-20 | 2025-10-31 | 187FS+0.12d |  |  |
| 194 | 1.3.6.1 | Criação e ajustes na tabela de avaliação do banco de dados | 2d | 2025-10-20 | 2025-10-21 |  |  | Eliel |
| 195 | 1.3.6.2 | Implementação da lógica de avaliação de serviços | 4d | 2025-10-22 | 2025-10-27 | 194 |  | Henrique [50%]; Henrriky [50%] |
| 196 | 1.3.6.3 | Geração de médias por serviço e por profissional | 4d | 2025-10-22 | 2025-10-27 | 195SS |  | Eliel |
| 197 | 1.3.6.4 | Integração do front-end com o back-end | 3d | 2025-10-28 | 2025-10-30 | 195, 196, 199 |  | Bruno [50%]; Henrique [50%] |
| 198 | 1.3.6.5 | Processo de Avaliação de Serviços Implementado | 0d | 2025-10-31 | 2025-10-31 | 197, 201, 202 | must finish on 2025-10-31 |  |
| 199 | 1.3.6.6 | Implementação das telas | 4d | 2025-10-22 | 2025-10-27 | 200 |  | Bruno [50%]; Alyson [50%] |
| 200 | 1.3.6.7 | Design das telas de avaliação | 2d | 2025-10-20 | 2025-10-21 |  |  | Bruno |
| 201 | 1.3.6.8 | Validação com a entidade parceira | 2d | 2025-10-29 | 2025-10-30 |  | as late as possible | Alyson [50%]; Henrriky [50%] |
| 202 | 1.3.6.9 | Revisão do trabalho realizado | 2d | 2025-10-29 | 2025-10-30 |  | as late as possible | Alyson [16.67%]; Bruno [16.67%]; Eliel [16.67%]; Henrique [16.67%]; Henrriky [16.67%]; Giovanna [16.67%] |
| 204 | 1.3.7 | **Etapa 6: Implementação do Processo de Programa de Indicação** | 9d | 2025-11-03 | 2025-11-14 | 198FS+0.12d |  |  |
| 205 | 1.3.7.1 | Ajustes na tabela de clientes do banco de dados | 2d | 2025-11-03 | 2025-11-04 |  |  | Alyson |
| 206 | 1.3.7.2 | Implementação da lógica do programa de indicação | 4d | 2025-11-05 | 2025-11-10 | 205 |  | Henrriky [50%]; Eliel [50%] |
| 207 | 1.3.7.3 | Integração do front-end com o back-end | 3d | 2025-11-11 | 2025-11-13 | 206, 209 |  | Henrique [50%]; Alyson [50%] |
| 208 | 1.3.7.4 | Processo de Programa de Indicação Implementado | 0d | 2025-11-14 | 2025-11-14 | 207, 211, 212 | must finish on 2025-11-14 |  |
| 209 | 1.3.7.5 | Implementação das telas | 4d | 2025-11-05 | 2025-11-10 | 210 |  | Bruno |
| 210 | 1.3.7.6 | Design das telas do processo | 2d | 2025-11-03 | 2025-11-04 |  |  | Bruno |
| 211 | 1.3.7.7 | Validação com a entidade parceira | 2d | 2025-11-12 | 2025-11-13 |  | as late as possible | Alyson [50%]; Henrriky [50%] |
| 212 | 1.3.7.8 | Revisão do trabalho realizado | 2d | 2025-11-12 | 2025-11-13 |  | as late as possible | Alyson [16.67%]; Bruno [16.67%]; Eliel [16.67%]; Henrique [16.67%]; Henrriky [16.67%]; Giovanna [16.67%] |
| 214 | 1.3.8 | **Etapa 7: Implementação do Processo de Mensagens e Descontos de Aniversário** | 9d | 2025-11-17 | 2025-11-28 | 208FS+0.12d |  |  |
| 215 | 1.3.8.1 | Revisão e ajustes no banco de dados | 2d | 2025-11-17 | 2025-11-18 |  |  | Henrique |
| 216 | 1.3.8.2 | Implementação da lógica de envio de mensagens de aniversário | 4d | 2025-11-19 | 2025-11-24 | 215 |  | Alyson |
| 217 | 1.3.8.3 | Implementação da lógica de descontos de aniversário | 4d | 2025-11-19 | 2025-11-24 | 215 |  | Henrique [50%]; Henrriky [50%] |
| 218 | 1.3.8.4 | Integração do front-end com o back-end | 3d | 2025-11-25 | 2025-11-27 | 216, 217, 220 |  | Eliel |
| 219 | 1.3.8.5 | Processo de Mensagens e Descontos de Aniversário Implementado | 0d | 2025-11-28 | 2025-11-28 | 218, 222, 223 | must finish on 2025-11-28 |  |
| 220 | 1.3.8.6 | Implementação das telas | 4d | 2025-11-19 | 2025-11-24 | 221 |  | Bruno [50%]; Eliel [50%] |
| 221 | 1.3.8.7 | Design das telas do processo | 2d | 2025-11-17 | 2025-11-18 |  |  | Bruno |
| 222 | 1.3.8.8 | Validação com a entidade parceira | 2d | 2025-11-26 | 2025-11-27 |  | as late as possible | Alyson [50%]; Henrriky [50%] |
| 223 | 1.3.8.9 | Revisão do trabalho realizado | 2d | 2025-11-26 | 2025-11-27 |  | as late as possible | Alyson [16.67%]; Bruno [16.67%]; Eliel [16.67%]; Henrique [16.67%]; Henrriky [16.67%]; Giovanna [16.67%] |
| 225 | 1.3.9 | Sistema Completamente Implementado | 0d | 2025-12-01 | 2025-12-01 | 219, 227, 242 | must finish on 2025-12-01 |  |

| ID | WBS | Task | Duration | Start | Finish | Predecessors | Complete | Constraint | Resources |
| --- | --- | --- | --- | --- | --- | --- | --- | --- | --- |
| 227 | 1.3.10 | **Etapa 8: Testes e Auditoria** | 80d | 2025-08-11 | 2025-11-28 |  |  |  |  |
| 228 | 1.3.10.1 | **Testes Automatizados** | 80d | 2025-08-11 | 2025-11-28 |  |  |  |  |
| 229 | 1.3.10.1.1 | Escrita de testes unitários | 80d | 2025-08-11 | 2025-11-28 |  |  |  | Henrique [50%]; Henrriky [50%] |
| 230 | 1.3.10.1.2 | Escrita de testes de componente | 80d | 2025-08-11 | 2025-11-28 |  |  |  | Henrique [50%]; Henrriky [50%] |
| 231 | 1.3.10.1.3 | Escrita de testes de integração | 80d | 2025-08-11 | 2025-11-28 |  |  |  | Henrique [50%]; Henrriky [50%] |
| 232 | 1.3.10.1.4 | Escrita de testes end-to-end | 80d | 2025-08-11 | 2025-11-28 |  |  |  | Henrique [50%]; Henrriky [50%] |
| 233 | 1.3.10.1.5 | Análise estática de código | 80d | 2025-08-11 | 2025-11-28 |  |  |  | Henrique [50%]; Henrriky [50%] |
| 235 | 1.3.10.2 | **Auditoria Técnica** | 80d | 2025-08-11 | 2025-11-28 |  |  |  |  |
| 236 | 1.3.10.2.1 | Auditoria de funcionalidades | 80d | 2025-08-11 | 2025-11-28 |  |  |  | Giovanna |
| 237 | 1.3.10.2.2 | Auditoria de dados e consistência | 80d | 2025-08-11 | 2025-11-28 |  |  |  | Giovanna |
| 238 | 1.3.10.2.3 | Verificação de segurança básica | 80d | 2025-08-11 | 2025-11-28 |  |  |  | Giovanna |
| 239 | 1.3.10.2.4 | Auditoria de usabilidade e experiência | 80d | 2025-08-11 | 2025-11-28 |  |  |  | Giovanna |
| 240 | 1.3.10.2.5 | Criação de relatórios de auditoria | 80d | 2025-08-11 | 2025-11-28 |  |  |  | Giovanna |
| 242 | 1.3.11 | **Etapa 9: Deploy da Aplicação** | 20d | 2025-08-11 | 2025-09-05 |  |  |  |  |
| 243 | 1.3.11.1 | Criação de infraestrutura completa no EC2 (AWS) | 10d | 2025-08-11 | 2025-08-22 |  |  |  | Henrriky [50%]; Henrique [50%] |
| 244 | 1.3.11.2 | Configuração de CI/CD para build automático | 10d | 2025-08-25 | 2025-09-05 | 243 |  |  | Henrriky [50%]; Henrique [50%] |
| 246 | 1.3.12 | Fim do Projeto | 0d | 2025-12-05 | 2025-12-05 | 225, 253 |  | must finish on 2025-12-05 |  |
| 248 | 1.3.13 | **Etapa 10: Fechamento e Entrega Final** | 83d | 2025-08-12 | 2025-12-04 |  |  |  |  |
| 249 | 1.3.13.1 | Incremento da documentação | 83d | 2025-08-12 | 2025-12-04 |  |  | start no earlier than 2025-08-12 | Giovanna [33.33%]; Henrique [33.33%]; Alyson [33%] |
| 250 | 1.3.13.2 | Aplicação de correções finais | 21d | 2025-11-05 | 2025-12-03 |  |  | as late as possible | Bruno [33.33%]; Eliel [33.33%]; Henrique [33.33%] |
| 251 | 1.3.13.3 | Última revisão com stakeholders | 21d | 2025-11-05 | 2025-12-03 |  |  | as late as possible | Alyson [50%]; Henrriky [50%] |
| 252 | 1.3.13.4 | Preparação para a apresentação final do projeto | 21d | 2025-11-05 | 2025-12-03 | 250SS, 251SS |  | as late as possible | Alyson [16.67%]; Bruno [16.67%]; Eliel [16.67%]; Henrique [16.67%]; Henrriky [16.67%]; Giovanna [16.67%] |
| 253 | 1.3.13.5 | Apresentação do Projeto | 0d | 2025-12-04 | 2025-12-04 | 225, 249, 252 |  | must finish on 2025-12-04 |  |
| 255 | 1.4 | **Diário de Bordo** | 188d | 2025-03-18 | 2025-12-04 | 2SS | 34% |  |  |
| 256 | 1.4.1 | Produção do diário de bordo da equipe | 188d | 2025-03-18 | 2025-12-04 | 246FF | 34% | must start on 2025-03-18 | Giovanna |
